# Office Remodel Actuals

How a schedule from MS Project changed from version to version. A marks actual dates.

## Version 1 (saved 2024-07-27, file Office Remodel Actuals.mpp)

| ID | WBS | Task | Duration | Start | Finish | Predecessors | Complete | Total float |
| --- | --- | --- | --- | --- | --- | --- | --- | --- |
| 1 | 1 | **Prep** | 0.5d | 2019-01-28 A | 2019-01-28 A |  | 100% |  |
| 2 |  | Remove existing furniture | 0.5d | 2019-01-28 A | 2019-01-28 A |  | 100% |  |
| 3 |  | Remove existing appliances | 0.5d | 2019-01-28 A | 2019-01-28 A |  | 100% |  |
| 4 | 2 | **Demolition** | 5d | 2019-01-28 A | 2019-02-04 A |  | 100% |  |
| 5 |  | Remove existing ceiling | 1d | 2019-01-28 A | 2019-01-29 A | 2, 3 | 100% |  |
| 6 |  | Tear out inside dividing walls | 2d | 2019-01-29 A | 2019-01-31 A | 5 | 100% |  |
| 7 |  | Remove drywall from main walls | 2d | 2019-01-31 A | 2019-02-04 A | 6 | 100% |  |
| 8 | 3 | **Construction** | 19.5d | 2019-02-04 A | 2019-03-01 |  | 93% | -1d |
| 9 |  | Install interior stud walls | 3d | 2019-02-04 A | 2019-02-07 A | 7 | 100% |  |
| 10 |  | Re-run electrical in all stud walls | 1d | 2019-02-07 A | 2019-02-18 A | 9 | 100% |  |
| 11 |  | Re-run plumbing for sink and icemaker | 1d | 2019-02-07 A | 2019-02-18 A | 9 | 100% |  |
| 12 |  | Install drywall | 5d | 2019-02-17 A | 2019-02-23 A | 10, 11 | 100% |  |
| 13 |  | Install ceiling grid | 4d | 2019-02-25 A | 2019-02-28 A | 12 | 100% |  |
| 14 |  | Install ceiling tile | 1d | 2019-03-01 | 2019-03-01 | 13 |  | -5d |
| 15 | 4 | **Finishing Work** | 13.5d | 2019-03-04 | 2019-03-21 |  |  | 0d |
| 16 |  | Paint walls and woodwork | 8d | 2019-03-04 | 2019-03-13 | 14 |  | 0d |
| 17 |  | Install new floor tile | 3d | 2019-03-14 | 2019-03-18 | 16 |  | 0d |
| 18 |  | Re-install appliances | 1d | 2019-03-19 | 2019-03-19 | 17 |  | 0d |
| 19 |  | Final cleaning | 1d | 2019-03-20 | 2019-03-20 | 18 |  | 0d |
| 20 |  | Re-install furniture | 0.5d | 2019-03-21 | 2019-03-21 | 19 |  | 0d |

## Version 2 (saved 2025-03-23, file Office Remodel Painting Adjusted.mpp)

Last finish stays 2019-03-21. Complete tasks 10 → 11.

Changed:

| ID | Task | Start | Finish | Complete | Total float | Other |
| --- | --- | --- | --- | --- | --- | --- |
| 8 | **Construction** |  | 2019-03-01 A | 93% → 100% | -1d → none |  |
| 12 | Install drywall |  |  |  |  | constraint none → start no earlier than 2019-02-15 |
| 14 | Install ceiling tile | 2019-03-01 A | 2019-03-01 A | 0% → 100% | -5d → none |  |
